# QLCHBH.GHN.LichBieu.v1

Schedule from MS Project, 2014-03-05 to 2014-08-12.
Grizli777

## Calendars

- Standard: Mon-Fri 08:00-12:00, 13:00-17:00; Sat-Sun off.

## Resources

| Resource |
| --- |
| GiangDH |
| NghiaTT |
| HaVV |
| TuanTV |
| MinhNN |
| ChungPQ |

## Schedule

| ID | WBS | Task | Type | Duration | Start | Finish | Predecessors | Total slack | Resources | Work |
| --- | --- | --- | --- | --- | --- | --- | --- | --- | --- | --- |
| 1 | 1 | Quản lý cửa hàng bách hóa | manual | 1d | 2014-03-05 08:00 | 2014-03-05 17:00 |  |  | GiangDH; HaVV; NghiaTT | 24h |
| 2 | 2 | **Lập kế hoạch dự án** |  | 12d | 2014-03-06 08:00 | 2014-03-21 17:00 | 1 | 0d | GiangDH; HaVV; NghiaTT | 568h |
| 3 | 2.1 | Làm WBS | manual | 1d | 2014-03-06 08:00 | 2014-03-06 17:00 |  |  | GiangDH; HaVV; NghiaTT | 24h |
| 4 | 2.2 | Ước tính nhân lực chi phí | manual | 1d | 2014-03-07 08:00 | 2014-03-07 17:00 | 3 |  | GiangDH | 8h |
| 5 | 2.3 | Xác định giải pháp kỹ thuật | manual | 1d | 2014-03-07 08:00 | 2014-03-07 17:00 | 3 |  | NghiaTT | 8h |
| 6 | 2.4 | Xây dựng kế hoạch tiến độ | manual | 2d | 2014-03-10 08:00 | 2014-03-11 17:00 | 5 |  | GiangDH; HaVV | 32h |
| 7 | 2.5 | Xác định rủi ro | manual | 2d | 2014-03-10 08:00 | 2014-03-11 17:00 | 5 |  | NghiaTT | 16h |
| 8 | 2.6 | Viết kế hoạch tổng hợp | manual | 3d | 2014-03-12 08:00 | 2014-03-14 17:00 | 7 |  | GiangDH; HaVV; NghiaTT | 72h |
| 9 | 2.7 | Khảo sát yêu cầu chi tiết | manual | 5d | 2014-03-17 08:00 | 2014-03-21 17:00 | 8 |  | GiangDH; HaVV; NghiaTT | 120h |
| 10 | 3 | **Khảo sát yêu cầu khách hàng** |  | 15d | 2014-03-24 08:00 | 2014-04-11 17:00 | 9 | 0d | GiangDH; HaVV; NghiaTT | 720h |
| 11 | 3.1 | Viêt URD | manual | 6d | 2014-03-24 08:00 | 2014-03-31 17:00 | 9 |  | GiangDH; HaVV; NghiaTT | 144h |
| 12 | 3.2 | Viết SRS | manual | 6d | 2014-04-01 08:00 | 2014-04-08 17:00 | 11 |  | GiangDH; HaVV; NghiaTT | 144h |
| 13 | 3.3 | Review và lấy chữ ký | manual | 3d | 2014-04-09 08:00 | 2014-04-11 17:00 | 12 |  | GiangDH; HaVV; NghiaTT | 72h |
| 14 | 4 | **Thiết kế hệ thống** |  | 15d | 2014-04-14 08:00 | 2014-05-02 17:00 | 13 | 0d | GiangDH; HaVV; NghiaTT | 720h |
| 15 | 4.1 | Lựa chọn công nghệ | manual | 3d | 2014-04-14 08:00 | 2014-04-16 17:00 | 13 |  | GiangDH; HaVV; NghiaTT | 72h |
| 16 | 4.2 | Thiết kế tổng thể hệ thống | manual | 12d | 2014-04-17 08:00 | 2014-05-02 17:00 | 15 |  | GiangDH; HaVV; NghiaTT | 288h |
| 17 | 5 | **Thiết kế chi tiết** |  | 37d | 2014-05-05 08:00 | 2014-06-24 17:00 | 16 | 0d | GiangDH; HaVV; NghiaTT | 2448h |
| 18 | 5.1 | **Thiết kế CSDL** |  | 15d | 2014-05-05 08:00 | 2014-05-23 17:00 | 16 |  | GiangDH; HaVV; NghiaTT | 360h |
| 19 | 5.1.1 | Thiết kế bảng Hàng hóa | manual | 0.5d | 2014-05-05 08:00 | 2014-05-05 12:00 |  |  |  |  |
| 20 | 5.1.2 | Thiết kế bảng Loại hàng | manual | 0.5d | 2014-05-05 08:00 | 2014-05-05 12:00 |  |  |  |  |
| 21 | 5.1.3 | Thiết kế bảng Nhà cung cấp | manual | 0.5d | 2014-05-05 08:00 | 2014-05-05 12:00 |  |  |  |  |
| 22 | 5.1.4 | Thiết kế bảng Phiếu nhập hàng | manual | 0.5d | 2014-05-05 08:00 | 2014-05-05 12:00 |  |  |  |  |
| 23 | 5.1.5 | Thiết kế Bảng Chi tiết phiếu nhập hàng | manual | 0.5d | 2014-05-05 08:00 | 2014-05-05 12:00 |  |  |  |  |
| 24 | 5.1.6 | Thiết kế bảng Phiếu xuất hàng | manual | 0.5d | 2014-05-05 08:00 | 2014-05-05 12:00 |  |  |  |  |
| 25 | 5.1.7 | Thiết kế bảng Chi tiết phiếu xuất hàng | manual | 0.5d | 2014-05-05 08:00 | 2014-05-05 12:00 |  |  |  |  |
| 26 | 5.1.8 | Thiết kế bảng Hóa đơn | manual | 1d | 2014-05-05 08:00 | 2014-05-05 17:00 |  |  |  |  |
| 27 | 5.1.9 | Thiết kế bảng Chi tiết hóa đơn | manual | 0.5d | 2014-05-05 08:00 | 2014-05-05 12:00 |  |  |  |  |
| 28 | 5.1.10 | Thiết kế bảng Nhân Viên | manual | 0.5d | 2014-05-05 08:00 | 2014-05-05 12:00 |  |  |  |  |
| 29 | 5.1.11 | Thiết kế bảng Lương | manual | 0.5d | 2014-05-05 08:00 | 2014-05-05 12:00 |  |  |  |  |
| 30 | 5.1.12 | Thiết kế bảng Khách hàng thân thiết | manual | 0.5d | 2014-05-05 08:00 | 2014-05-05 12:00 |  |  |  |  |

| ID | WBS | Task | Type | Duration | Start | Finish | Predecessors | Total slack | Resources | Work |
| --- | --- | --- | --- | --- | --- | --- | --- | --- | --- | --- |
| 31 | 5.2 | **Thiết kế giao diện/giao tiếp giữa các module** |  | 12d | 2014-05-26 08:00 | 2014-06-10 17:00 |  | 0d | GiangDH; HaVV; NghiaTT | 960h |
| 32 | 5.2.1 | **Gói Common** |  | 5d | 2014-05-26 08:00 | 2014-05-30 17:00 |  | 0d | GiangDH; HaVV; NghiaTT | 288h |
| 33 | 5.2.1.1 | **Lớp Connect** |  | 2d | 2014-05-26 08:00 | 2014-05-27 17:00 |  | 0d | GiangDH; HaVV; NghiaTT | 96h |
| 34 | 5.2.1.1.1 | Phương thức LayChuoiKetNoi | manual | 2d | 2014-05-26 08:00 | 2014-05-27 17:00 | 18 |  | GiangDH | 16h |
| 35 | 5.2.1.1.2 | Phương thức Connect | manual | 2d | 2014-05-26 08:00 | 2014-05-27 17:00 | 18 |  | HaVV | 16h |
| 36 | 5.2.1.1.3 | Phương thức Chung | manual | 2d | 2014-05-26 08:00 | 2014-05-27 17:00 | 18 |  | NghiaTT | 16h |
| 37 | 5.2.1.2 | **Lớp Fields** |  | 3d | 2014-05-28 08:00 | 2014-05-30 17:00 |  | 0d | GiangDH; HaVV; NghiaTT | 72h |
| 38 | 5.2.1.2.1 | Phương thức khởi tạo Fields(string _name, SqlDbType _type, int _length, Object _value) | manual | 3d | 2014-05-28 08:00 | 2014-05-30 17:00 | 36 |  |  |  |
| 39 | 5.2.2 | **Gói DataAcessLayer** |  | 2d | 2014-06-02 08:00 | 2014-06-03 17:00 |  | 0d | GiangDH; HaVV; NghiaTT | 144h |
| 40 | 5.2.2.1 | **Lớp DataAcessLayer** |  | 2d | 2014-06-02 08:00 | 2014-06-03 17:00 |  | 0d | GiangDH; HaVV; NghiaTT | 96h |
| 41 | 5.2.2.1.1 | Phương thức GetTable | manual | 1d | 2014-06-02 08:00 | 2014-06-02 17:00 | 38 |  | GiangDH | 8h |
| 42 | 5.2.2.1.2 | Phương thức ExcuteSQL | manual | 1d | 2014-06-03 08:00 | 2014-06-03 17:00 | 41 |  | GiangDH | 8h |
| 43 | 5.2.2.1.3 | Phương thức ExcuteWithParameter | manual | 2d | 2014-06-02 08:00 | 2014-06-03 17:00 | 38 |  | HaVV | 16h |
| 44 | 5.2.2.1.4 | Phương thức ExcuteScalar | manual | 2d | 2014-06-02 08:00 | 2014-06-03 17:00 | 38 |  | NghiaTT | 16h |
| 45 | 5.2.3 | **Gói Bussiness** |  | 5d | 2014-06-03 17:00 | 2014-06-10 17:00 |  | 0d | GiangDH; HaVV; NghiaTT | 240h |
| 46 | 5.2.3.1 | **Lớp Hàng Hóa** |  | 1d | 2014-06-03 17:00 | 2014-06-04 17:00 | 44 | 0d | GiangDH | 8h |
| 47 | 5.2.3.1.1 | Phương thức thêm | manual | 1d | 2014-06-03 17:00 | 2014-06-04 17:00 |  |  |  |  |
| 48 | 5.2.3.1.2 | Phương thức sửa | manual | 1d | 2014-06-03 17:00 | 2014-06-04 17:00 |  |  |  |  |
| 49 | 5.2.3.1.3 | Phương thức xóa | manual | 1d | 2014-06-03 17:00 | 2014-06-04 17:00 |  |  |  |  |
| 50 | 5.2.3.1.4 | Phương thức tìm kiếm | manual | 1d | 2014-06-03 17:00 | 2014-06-04 17:00 |  |  |  |  |
| 51 | 5.2.3.2 | **Lớp Loại Loại hàng** |  | 1d | 2014-06-03 17:00 | 2014-06-04 17:00 | 44 | 0d | HaVV | 8h |
| 52 | 5.2.3.2.1 | Phương thức thêm | manual | 1d | 2014-06-03 17:00 | 2014-06-04 17:00 |  |  |  |  |
| 53 | 5.2.3.2.2 | Phương thức Sửa | manual | 1d | 2014-06-03 17:00 | 2014-06-04 17:00 |  |  |  |  |
| 54 | 5.2.3.2.3 | Phương thức Xóa | manual | 1d | 2014-06-03 17:00 | 2014-06-04 17:00 |  |  |  |  |
| 55 | 5.2.3.2.4 | Phương thức tìm kiếm | manual | 1d | 2014-06-03 17:00 | 2014-06-04 17:00 |  |  |  |  |

| ID | WBS | Task | Type | Duration | Start | Finish | Predecessors | Total slack | Resources | Work |
| --- | --- | --- | --- | --- | --- | --- | --- | --- | --- | --- |
| 56 | 5.2.3.3 | **Lớp Nhà Cung Cấp** |  | 1d | 2014-06-03 17:00 | 2014-06-04 17:00 | 44 | 0d | NghiaTT | 8h |
| 57 | 5.2.3.3.1 | Phương thức thêm | manual | 1d | 2014-06-03 17:00 | 2014-06-04 17:00 |  |  |  |  |
| 58 | 5.2.3.3.2 | Phương thức Sửa | manual | 1d | 2014-06-03 17:00 | 2014-06-04 17:00 |  |  |  |  |
| 59 | 5.2.3.3.3 | Phương thức Xóa | manual | 1d | 2014-06-03 17:00 | 2014-06-04 17:00 |  |  |  |  |
| 60 | 5.2.3.3.4 | Phương thức tìm kiếm | manual | 1d | 2014-06-03 17:00 | 2014-06-04 17:00 |  |  |  |  |
| 61 | 5.2.3.4 | **Lớp Phiếu nhập hàng** |  | 1d | 2014-06-04 17:00 | 2014-06-05 17:00 | 56 | 0d | GiangDH | 8h |
| 62 | 5.2.3.4.1 | Phương thức thêm | manual | 1d | 2014-06-04 17:00 | 2014-06-05 17:00 |  |  |  |  |
| 63 | 5.2.3.4.2 | Phương thức Sửa | manual | 1d | 2014-06-04 17:00 | 2014-06-05 17:00 |  |  |  |  |
| 64 | 5.2.3.4.3 | Phương thức Xóa | manual | 1d | 2014-06-04 17:00 | 2014-06-05 17:00 |  |  |  |  |
| 65 | 5.2.3.4.4 | Phương thức tìm kiếm | manual | 1d | 2014-06-04 17:00 | 2014-06-05 17:00 |  |  |  |  |
| 66 | 5.2.3.5 | **Lớp Chi tiết phiếu nhập hàng** |  | 1d | 2014-06-04 17:00 | 2014-06-05 17:00 | 56 | 0d | HaVV | 8h |
| 67 | 5.2.3.5.1 | Phương thức thêm | manual | 1d | 2014-06-04 17:00 | 2014-06-05 17:00 |  |  |  |  |
| 68 | 5.2.3.5.2 | Phương thức Sửa | manual | 1d | 2014-06-04 17:00 | 2014-06-05 17:00 |  |  |  |  |
| 69 | 5.2.3.5.3 | Phương thức Xóa | manual | 1d | 2014-06-04 17:00 | 2014-06-05 17:00 |  |  |  |  |
| 70 | 5.2.3.6 | **Lớp Phiếu xuất hàng** |  | 1d | 2014-06-04 17:00 | 2014-06-05 17:00 | 56 | 0d | NghiaTT | 8h |
| 71 | 5.2.3.6.1 | Phương thức thêm | manual | 1d | 2014-06-04 17:00 | 2014-06-05 17:00 |  |  |  |  |
| 72 | 5.2.3.6.2 | Phương thức Sửa | manual | 1d | 2014-06-04 17:00 | 2014-06-05 17:00 |  |  |  |  |
| 73 | 5.2.3.6.3 | Phương thức Xóa | manual | 1d | 2014-06-04 17:00 | 2014-06-05 17:00 |  |  |  |  |
| 74 | 5.2.3.6.4 | Phương thức tìm kiếm | manual | 1d | 2014-06-04 17:00 | 2014-06-05 17:00 |  |  |  |  |
| 75 | 5.2.3.7 | **Lớp Chi tiết phiếu xuất hàng** |  | 1d | 2014-06-05 17:00 | 2014-06-06 17:00 | 70 | 0d | GiangDH | 8h |
| 76 | 5.2.3.7.1 | Phương thức thêm | manual | 1d | 2014-06-05 17:00 | 2014-06-06 17:00 |  |  |  |  |
| 77 | 5.2.3.7.2 | Phương thức Sửa | manual | 1d | 2014-06-05 17:00 | 2014-06-06 17:00 |  |  |  |  |
| 78 | 5.2.3.7.3 | Phương thức Xóa | manual | 1d | 2014-06-05 17:00 | 2014-06-06 17:00 |  |  |  |  |
| 79 | 5.2.3.8 | **Lớp Hóa Đơn** |  | 1d | 2014-06-05 17:00 | 2014-06-06 17:00 | 70 | 0d | HaVV | 8h |
| 80 | 5.2.3.8.1 | Phương thức thêm | manual | 1d | 2014-06-05 17:00 | 2014-06-06 17:00 |  |  |  |  |
| 81 | 5.2.3.8.2 | Phương thức Sửa | manual | 1d | 2014-06-05 17:00 | 2014-06-06 17:00 |  |  |  |  |
| 82 | 5.2.3.8.3 | Phương thức Xóa | manual | 1d | 2014-06-05 17:00 | 2014-06-06 17:00 |  |  |  |  |
| 83 | 5.2.3.8.4 | Phương thức tìm kiếm | manual | 1d | 2014-06-05 17:00 | 2014-06-06 17:00 |  |  |  |  |

| ID | WBS | Task | Type | Duration | Start | Finish | Predecessors | Total slack | Resources | Work |
| --- | --- | --- | --- | --- | --- | --- | --- | --- | --- | --- |
| 84 | 5.2.3.9 | **Lớp Chi tiết hóa đơn** |  | 1d | 2014-06-05 17:00 | 2014-06-06 17:00 | 70 | 0d | NghiaTT | 8h |
| 85 | 5.2.3.9.1 | Phương thức thêm | manual | 1d | 2014-06-05 17:00 | 2014-06-06 17:00 |  |  |  |  |
| 86 | 5.2.3.9.2 | Phương thức Sửa | manual | 1d | 2014-06-05 17:00 | 2014-06-06 17:00 |  |  |  |  |
| 87 | 5.2.3.9.3 | Phương thức Xóa | manual | 1d | 2014-06-05 17:00 | 2014-06-06 17:00 |  |  |  |  |
| 88 | 5.2.3.10 | **Lớp Nhân viên** |  | 1d | 2014-06-06 17:00 | 2014-06-09 17:00 | 84 | 0d | GiangDH | 8h |
| 89 | 5.2.3.10.1 | Phương thức thêm | manual | 1d | 2014-06-06 17:00 | 2014-06-09 17:00 |  |  |  |  |
| 90 | 5.2.3.10.2 | Phương thức sửa | manual | 1d | 2014-06-06 17:00 | 2014-06-09 17:00 |  |  |  |  |
| 91 | 5.2.3.10.3 | Phương thức xóa | manual | 1d | 2014-06-06 17:00 | 2014-06-09 17:00 |  |  |  |  |
| 92 | 5.2.3.10.4 | Phương thức tìm kiếm | manual | 1d | 2014-06-06 17:00 | 2014-06-09 17:00 |  |  |  |  |
| 93 | 5.2.3.11 | **Lớp Lương** |  | 1d | 2014-06-06 17:00 | 2014-06-09 17:00 | 84 | 0d | HaVV | 8h |
| 94 | 5.2.3.11.1 | Phương thức thêm | manual | 1d | 2014-06-06 17:00 | 2014-06-09 17:00 |  |  |  |  |
| 95 | 5.2.3.11.2 | Phương thức Sửa | manual | 1d | 2014-06-06 17:00 | 2014-06-09 17:00 |  |  |  |  |
| 96 | 5.2.3.11.3 | Phương thức Xóa | manual | 1d | 2014-06-06 17:00 | 2014-06-09 17:00 |  |  |  |  |
| 97 | 5.2.3.11.4 | Phương thức tìm kiếm | manual | 1d | 2014-06-06 17:00 | 2014-06-09 17:00 |  |  |  |  |
| 98 | 5.2.3.12 | **Lớp Khách hàng thân thiết** |  | 1d | 2014-06-06 17:00 | 2014-06-09 17:00 | 84 | 0d | NghiaTT | 8h |
| 99 | 5.2.3.12.1 | Phương thức thêm | manual | 1d | 2014-06-06 17:00 | 2014-06-09 17:00 |  |  |  |  |
| 100 | 5.2.3.12.2 | Phương thức Sửa | manual | 1d | 2014-06-06 17:00 | 2014-06-09 17:00 |  |  |  |  |
| 101 | 5.2.3.12.3 | Phương thức Xóa | manual | 1d | 2014-06-06 17:00 | 2014-06-09 17:00 |  |  |  |  |
| 102 | 5.2.3.12.4 | Phương thức tìm kiếm | manual | 1d | 2014-06-06 17:00 | 2014-06-09 17:00 |  |  |  |  |
| 103 | 5.2.3.13 | **Lớp Thống kê** |  | 1d | 2014-06-09 17:00 | 2014-06-10 17:00 | 98 | 0d | GiangDH; HaVV; NghiaTT | 24h |
| 104 | 5.2.3.13.1 | Phương thức GetAll | manual | 1d | 2014-06-09 17:00 | 2014-06-10 17:00 |  |  |  |  |
| 105 | 5.2.3.13.2 | Phương thức isExist | manual | 1d | 2014-06-09 17:00 | 2014-06-10 17:00 |  |  |  |  |
| 106 | 5.2.3.13.3 | Phương thức InsertCmd | manual | 1d | 2014-06-09 17:00 | 2014-06-10 17:00 |  |  |  |  |
| 107 | 5.2.3.13.4 | Phương thức UpdateCmd | manual | 1d | 2014-06-09 17:00 | 2014-06-10 17:00 |  |  |  |  |
| 108 | 5.2.3.13.5 | Phương thức DeleteCmd | manual | 1d | 2014-06-09 17:00 | 2014-06-10 17:00 |  |  |  |  |

| ID | WBS | Task | Type | Duration | Start | Finish | Predecessors | Total slack | Resources | Work |
| --- | --- | --- | --- | --- | --- | --- | --- | --- | --- | --- |
| 109 | 5.3 | **Thiết kế giao diện/giao tiếp với các hệ thống ngoài** |  | 5d | 2014-06-18 08:00 | 2014-06-24 17:00 | 103 | 0d | GiangDH; HaVV; NghiaTT | 240h |
| 110 | 5.3.1 | Giao diện form đăng nhập hệ thống | manual | 1d | 2014-06-18 08:00 | 2014-06-18 17:00 | 103 |  | GiangDH | 8h |
| 111 | 5.3.2 | Giao diện form đổi mật khẩu | manual | 1d | 2014-06-18 08:00 | 2014-06-18 17:00 | 103 |  | HaVV | 8h |
| 112 | 5.3.3 | Giao diện form chính | manual | 1d | 2014-06-18 08:00 | 2014-06-18 17:00 | 103 |  | NghiaTT | 8h |
| 113 | 5.3.4 | Giao diện quản lý Hàng hóa | manual | 1d | 2014-06-19 08:00 | 2014-06-19 17:00 | 112 |  | GiangDH | 8h |
| 114 | 5.3.5 | Giao diện quản lý Loại hàng | manual | 1d | 2014-06-19 08:00 | 2014-06-19 17:00 | 112 |  | HaVV | 8h |
| 115 | 5.3.6 | Giao diện quản lý Nhà cung cấp | manual | 1d | 2014-06-19 08:00 | 2014-06-19 17:00 | 112 |  | NghiaTT | 8h |
| 116 | 5.3.7 | Giao diện quản lý Phiếu nhập hàng | manual | 1d | 2014-06-20 08:00 | 2014-06-20 17:00 | 115 |  | GiangDH | 8h |
| 117 | 5.3.8 | Giao diện Chi tiết phiếu nhập hàng | manual | 1d | 2014-06-20 08:00 | 2014-06-20 17:00 | 115 |  | HaVV | 8h |
| 118 | 5.3.9 | Giao diện quản lý Phiếu xuất hàng | manual | 1d | 2014-06-20 08:00 | 2014-06-20 17:00 | 115 |  | NghiaTT | 8h |
| 119 | 5.3.10 | Giao diện Chi tiết phiếu xuất hàng | manual | 1d | 2014-06-23 08:00 | 2014-06-23 17:00 | 118 |  | GiangDH | 8h |
| 120 | 5.3.11 | Giao diện quản lý Hóa đơn | manual | 1d | 2014-06-23 08:00 | 2014-06-23 17:00 | 118 |  | HaVV | 8h |
| 121 | 5.3.12 | Giao diện Chi tiết hóa đơn | manual | 1d | 2014-06-23 08:00 | 2014-06-23 17:00 | 118 |  | NghiaTT | 8h |
| 122 | 5.3.13 | Giao diện quản lý Nhân viên | manual | 1d | 2014-06-24 08:00 | 2014-06-24 17:00 | 121 |  | GiangDH | 8h |
| 123 | 5.3.14 | Giao diện quản lý Lương | manual | 1d | 2014-06-24 08:00 | 2014-06-24 17:00 | 121 |  | HaVV | 8h |
| 124 | 5.3.15 | Giao diện quản lý Khách hàng thân thiết | manual | 1d | 2014-06-24 08:00 | 2014-06-24 17:00 | 121 |  | NghiaTT | 8h |
| 125 | 6 | **Phát triển hệ thống** |  | 7d | 2014-06-25 08:00 | 2014-07-03 17:00 | 124 | 0d | ChungPQ; GiangDH; HaVV; MinhNN; NghiaTT; TuanTV | 1368h |
| 126 | 6.1 | **Phát triển** |  | 4d | 2014-06-25 08:00 | 2014-06-30 17:00 | 124 | 0d | ChungPQ; GiangDH; HaVV; MinhNN; NghiaTT; TuanTV | 560h |
| 127 | 6.1.1 | **Code create database Qlchbh** |  | 1d | 2014-06-25 08:00 | 2014-06-25 17:00 | 124 | 0d | ChungPQ; GiangDH; HaVV; MinhNN; NghiaTT; TuanTV | 96h |
| 128 | 6.1.1.1 | Code create table Hàng hóa | manual | 0.5d | 2014-06-25 08:00 | 2014-06-25 12:00 | 124 |  | ChungPQ | 4h |
| 129 | 6.1.1.2 | Code create table Loại hàng | manual | 0.5d | 2014-06-25 13:00 | 2014-06-25 17:00 | 128 |  | ChungPQ | 4h |
| 130 | 6.1.1.3 | Code create table Nhà cung cấp | manual | 0.5d | 2014-06-25 08:00 | 2014-06-25 12:00 | 124 |  | GiangDH | 4h |
| 131 | 6.1.1.4 | Code create table Phiếu nhập hàng | manual | 0.5d | 2014-06-25 13:00 | 2014-06-25 17:00 | 130 |  | GiangDH | 4h |
| 132 | 6.1.1.5 | Code create table Chi tiết phiếu nhập hàng | manual | 0.5d | 2014-06-25 08:00 | 2014-06-25 12:00 | 124 |  | HaVV | 4h |
| 133 | 6.1.1.6 | Code create table Phiếu xuất hàng | manual | 0.5d | 2014-06-25 13:00 | 2014-06-25 17:00 | 132 |  | HaVV | 4h |
| 134 | 6.1.1.7 | Code create table Chi tiết phiếu xuất hàng | manual | 0.5d | 2014-06-25 08:00 | 2014-06-25 12:00 | 124 |  | MinhNN | 4h |
| 135 | 6.1.1.8 | Code create table Hóa đơn | manual | 0.5d | 2014-06-25 13:00 | 2014-06-25 17:00 | 134 |  | MinhNN | 4h |
| 136 | 6.1.1.9 | Code create table Chi tiết hóa đơn | manual | 0.5d | 2014-06-25 08:00 | 2014-06-25 12:00 | 124 |  | NghiaTT | 4h |
| 137 | 6.1.1.10 | Code create table Nhân viên | manual | 0.5d | 2014-06-25 13:00 | 2014-06-25 17:00 | 136 |  | NghiaTT | 4h |
| 138 | 6.1.1.11 | Code create table Lương | manual | 0.5d | 2014-06-25 08:00 | 2014-06-25 12:00 | 124 |  | TuanTV | 4h |
| 139 | 6.1.1.12 | Code create table Khách hàng thân thiết | manual | 0.5d | 2014-06-25 13:00 | 2014-06-25 17:00 | 138 |  | TuanTV | 4h |

| ID | WBS | Task | Type | Duration | Start | Finish | Predecessors | Total slack | Resources | Work |
| --- | --- | --- | --- | --- | --- | --- | --- | --- | --- | --- |
| 140 | 6.1.2 | **Code giao diện** |  | 2d | 2014-06-26 08:00 | 2014-06-27 17:00 | 139 | 0d | ChungPQ; GiangDH; HaVV; MinhNN; NghiaTT; TuanTV | 160h |
| 141 | 6.1.2.1 | Code form đăng nhập | manual | 0.5d | 2014-06-26 08:00 | 2014-06-26 12:00 | 139 |  | ChungPQ | 4h |
| 142 | 6.1.2.2 | Code form đổi mật khẩu | manual | 0.5d | 2014-06-26 13:00 | 2014-06-26 17:00 | 141 |  | ChungPQ | 4h |
| 143 | 6.1.2.3 | Code form chính | manual | 1d | 2014-06-26 08:00 | 2014-06-26 17:00 | 139 |  | GiangDH | 8h |
| 144 | 6.1.2.4 | Code form quản lý Hàng hóa | manual | 0.5d | 2014-06-26 08:00 | 2014-06-26 12:00 | 139 |  | HaVV | 4h |
| 145 | 6.1.2.5 | Code form quản lý Loại hàng | manual | 0.5d | 2014-06-26 13:00 | 2014-06-26 17:00 | 144 |  | HaVV | 4h |
| 146 | 6.1.2.6 | Code form quản lý Nhà cung cấp | manual | 0.5d | 2014-06-26 08:00 | 2014-06-26 12:00 | 139 |  | MinhNN | 4h |
| 147 | 6.1.2.7 | Code form quản lý Phiếu nhập hàng | manual | 0.5d | 2014-06-26 13:00 | 2014-06-26 17:00 | 146 |  | MinhNN | 4h |
| 148 | 6.1.2.8 | Code form Chi tiết phiếu nhập hàng | manual | 0.5d | 2014-06-26 08:00 | 2014-06-26 12:00 | 139 |  | NghiaTT | 4h |
| 149 | 6.1.2.9 | Code form quản lý Phiếu xuất hàng | manual | 0.5d | 2014-06-26 13:00 | 2014-06-26 17:00 | 148 |  | NghiaTT | 4h |
| 150 | 6.1.2.10 | Code form Chi tiết phiếu xuất hàng | manual | 0.5d | 2014-06-26 08:00 | 2014-06-26 12:00 | 139 |  | TuanTV | 4h |
| 151 | 6.1.2.11 | Code form quản lý Hóa đơn | manual | 0.5d | 2014-06-26 13:00 | 2014-06-26 17:00 | 150 |  | TuanTV | 4h |
| 152 | 6.1.2.12 | Code form chi tiết hóa đơn | manual | 0.5d | 2014-06-27 08:00 | 2014-06-27 12:00 | 151 |  | HaVV | 4h |
| 153 | 6.1.2.13 | Code form quản lý Nhân viên |  | 0.5d | 2014-06-27 13:00 | 2014-06-27 17:00 | 152 | 31.8d | HaVV | 4h |
| 154 | 6.1.2.14 | Code form quản lý Lương | manual | 0.5d | 2014-06-27 08:00 | 2014-06-27 12:00 | 151 |  | MinhNN | 4h |
| 155 | 6.1.2.15 | Code form quản lý Khách hàng thân thiết |  | 0.5d | 2014-06-27 13:00 | 2014-06-27 17:00 | 154 | 0d | MinhNN | 4h |
| 156 | 6.1.3 | **Code Class** |  | 1d | 2014-06-30 08:00 | 2014-06-30 17:00 | 155 | 0d | ChungPQ; GiangDH; HaVV; MinhNN; NghiaTT; TuanTV | 112h |
| 157 | 6.1.3.1 | **Code class Qlchbh.Common.Connect** |  | 0.5d | 2014-06-30 08:00 | 2014-06-30 12:00 | 155 | 0d | ChungPQ | 4h |
| 158 | 6.1.3.1.1 | Code phương thức Qlchbh.Common.Connect.Connect | manual | 0.5d | 2014-06-30 08:00 | 2014-06-30 12:00 | 155 |  |  |  |
| 159 | 6.1.3.1.2 | Code phương thức Qlchbh.Common.Connect.LayChuoiKetNoi | manual | 0.5d | 2014-06-30 08:00 | 2014-06-30 12:00 | 155 |  |  |  |
| 160 | 6.1.3.1.3 | Code phương thức Qlchbh.Common.Connect.closeConectTion | manual | 0.5d | 2014-06-30 08:00 | 2014-06-30 12:00 | 155 |  |  |  |
| 161 | 6.1.3.2 | **Code class Qlchbh.Common.Fields** |  | 0.5d | 2014-06-30 13:00 | 2014-06-30 17:00 | 160 | 0d | ChungPQ | 4h |
| 162 | 6.1.3.2.1 | Code phương thức Qlchbh.Common.Fields.Fields | manual | 0.5d | 2014-06-30 13:00 | 2014-06-30 17:00 | 160 |  |  |  |
| 163 | 6.1.3.3 | **Code class Qlchbh.DataAcessLayer.DataAcessLayer** |  | 0.5d | 2014-06-30 08:00 | 2014-06-30 12:00 | 155 | 0d | GiangDH | 4h |
| 164 | 6.1.3.3.1 | Code phương thức Qlchbh.DataAcessLayer.DatAcessLayer.GetTable | manual | 0.5d | 2014-06-30 08:00 | 2014-06-30 12:00 | 155 |  |  |  |
| 165 | 6.1.3.3.2 | Code phương thức Qlchbh.DataAcessLayer.DatAcessLayer.ExcuteSQL | manual | 0.5d | 2014-06-30 08:00 | 2014-06-30 12:00 | 155 |  |  |  |
| 166 | 6.1.3.3.3 | Code phương thức Qlchbh.DataAcessLayer.DatAcessLayer.ExcuteWithParameter | manual | 0.5d | 2014-06-30 08:00 | 2014-06-30 12:00 | 155 |  |  |  |
| 167 | 6.1.3.3.4 | Code phương thức Qlchbh.DataAcessLayer.DatAcessLayer.ExcuteScalar | manual | 0.5d | 2014-06-30 08:00 | 2014-06-30 12:00 | 155 |  |  |  |

| ID | WBS | Task | Type | Duration | Start | Finish | Predecessors | Total slack | Resources | Work |
| --- | --- | --- | --- | --- | --- | --- | --- | --- | --- | --- |
| 168 | 6.1.3.4 | **Code class Qlchbh.Bussiness.HangHoa_ET** |  | 0.5d | 2014-06-30 13:00 | 2014-06-30 17:00 | 167 | 0d | GiangDH | 4h |
| 169 | 6.1.3.4.1 | Code phương thức Qlchbh.Bussiness.HangHoa_ET.ListField | manual | 0.5d | 2014-06-30 13:00 | 2014-06-30 17:00 | 167 |  |  |  |
| 170 | 6.1.3.4.2 | Code phương thức Qlchbh.Bussiness.HangHoa_ET.InsertCmd | manual | 0.5d | 2014-06-30 13:00 | 2014-06-30 17:00 | 167 |  |  |  |
| 171 | 6.1.3.4.3 | Code phương thức Qlchbh.Bussiness.HangHoa_ET.UpdateCmd | manual | 0.5d | 2014-06-30 13:00 | 2014-06-30 17:00 | 167 |  |  |  |
| 172 | 6.1.3.4.4 | Code phương thức Qlchbh.Bussiness.HangHoa_ET.DeleteCmd | manual | 0.5d | 2014-06-30 13:00 | 2014-06-30 17:00 | 167 |  |  |  |
| 173 | 6.1.3.5 | **Code class Qlchbh.Bussiness.LoaiHang_ET** |  | 0.5d | 2014-06-30 08:00 | 2014-06-30 12:00 | 155 | 0d | HaVV | 4h |
| 174 | 6.1.3.5.1 | Code phương thức Qlchbh.Bussiness.LoaiHang_ET.ListField | manual | 0.5d | 2014-06-30 08:00 | 2014-06-30 12:00 | 155 |  |  |  |
| 175 | 6.1.3.5.2 | Code phương thức Qlchbh.Bussiness.LoaiHang_ET.InsertCmd | manual | 0.5d | 2014-06-30 08:00 | 2014-06-30 12:00 | 155 |  |  |  |
| 176 | 6.1.3.5.3 | Code phương thức Qlchbh.Bussiness.LoaiHang_ET.UpdateCmd | manual | 0.5d | 2014-06-30 08:00 | 2014-06-30 12:00 | 155 |  |  |  |
| 177 | 6.1.3.5.4 | Code phương thức Qlchbh.Bussiness.LoaiHang_ET.DeleteCmd | manual | 0.5d | 2014-06-30 08:00 | 2014-06-30 12:00 | 155 |  |  |  |
| 178 | 6.1.3.6 | **Code class Qlchbh.Bussiness.NhaCungCap_ET** |  | 0.5d | 2014-06-30 13:00 | 2014-06-30 17:00 | 177 | 0d | HaVV | 4h |
| 179 | 6.1.3.6.1 | Code phương thức Qlchbh.Bussiness.NhaCungCap_ET.ListField | manual | 0.5d | 2014-06-30 13:00 | 2014-06-30 17:00 | 177 |  |  |  |
| 180 | 6.1.3.6.2 | Code phương thức Qlchbh.Bussiness.NhaCungCap_ET.InsertCmd | manual | 0.5d | 2014-06-30 13:00 | 2014-06-30 17:00 | 177 |  |  |  |
| 181 | 6.1.3.6.3 | Code phương thức Qlchbh.Bussiness.NhaCungCap_ET.UpdateCmd | manual | 0.5d | 2014-06-30 13:00 | 2014-06-30 17:00 | 177 |  |  |  |
| 182 | 6.1.3.6.4 | Code phương thức Qlchbh.Bussiness.NhaCungCap_ET.DeleteCmd | manual | 0.5d | 2014-06-30 13:00 | 2014-06-30 17:00 | 177 |  |  |  |
| 183 | 6.1.3.7 | **Code class Qlchbh.Bussiness.PhieuNhapHang_ET** |  | 0.5d | 2014-06-30 08:00 | 2014-06-30 12:00 | 155 | 0d | MinhNN | 4h |
| 184 | 6.1.3.7.1 | Code phương thức Qlchbh.Bussiness.PhieuNhapHang_ET.ListField | manual | 0.5d | 2014-06-30 08:00 | 2014-06-30 12:00 | 155 |  |  |  |
| 185 | 6.1.3.7.2 | Code phương thức Qlchbh.Bussiness.PhieuNhapHang_ET.InsertCmd | manual | 0.5d | 2014-06-30 08:00 | 2014-06-30 12:00 | 155 |  |  |  |
| 186 | 6.1.3.7.3 | Code phương thức Qlchbh.Bussiness.PhieuNhapHang_ET.UpdateCmd | manual | 0.5d | 2014-06-30 08:00 | 2014-06-30 12:00 | 155 |  |  |  |
| 187 | 6.1.3.7.4 | Code phương thức Qlchbh.Bussiness.PhieuNhapHang_ET.DeleteCmd | manual | 0.5d | 2014-06-30 08:00 | 2014-06-30 12:00 | 155 |  |  |  |
| 188 | 6.1.3.8 | **Code class Qlchbh.Bussiness.ChiTietPhieuNhapHang_ET** |  | 0.5d | 2014-06-30 13:00 | 2014-06-30 17:00 | 187 | 0d | MinhNN | 4h |
| 189 | 6.1.3.8.1 | Code phương thức Qlchbh.Bussiness.ChiTietPhieuNhapHang_ET.ListField | manual | 0.5d | 2014-06-30 13:00 | 2014-06-30 17:00 | 187 |  |  |  |
| 190 | 6.1.3.8.2 | Code phương thức Qlchbh.Bussiness.ChiTietPhieuNhapHang_ET.InsertCmd | manual | 0.5d | 2014-06-30 13:00 | 2014-06-30 17:00 | 187 |  |  |  |
| 191 | 6.1.3.8.3 | Code phương thức Qlchbh.Bussiness.ChiTietPhieuNhapHang_ET.UpdateCmd | manual | 0.5d | 2014-06-30 13:00 | 2014-06-30 17:00 | 187 |  |  |  |
| 192 | 6.1.3.8.4 | Code phương thức Qlchbh.Bussiness.ChiTietPhieuNhapHang_ET.DeleteCmd | manual | 0.5d | 2014-06-30 13:00 | 2014-06-30 17:00 | 187 |  |  |  |

| ID | WBS | Task | Type | Duration | Start | Finish | Predecessors | Total slack | Resources | Work |
| --- | --- | --- | --- | --- | --- | --- | --- | --- | --- | --- |
| 193 | 6.1.3.9 | **Code class Qlchbh.Bussiness.PhieuXuatHang_ET** |  | 0.5d | 2014-06-30 08:00 | 2014-06-30 12:00 | 155 | 0d | NghiaTT | 4h |
| 194 | 6.1.3.9.1 | Code phương thức Qlchbh.Bussiness.PhieuXuatHang_ET.ListField | manual | 0.5d | 2014-06-30 08:00 | 2014-06-30 12:00 | 155 |  |  |  |
| 195 | 6.1.3.9.2 | Code phương thức Qlchbh.Bussiness.PhieuXuatHang_ET.InsertCmd | manual | 0.5d | 2014-06-30 08:00 | 2014-06-30 12:00 | 155 |  |  |  |
| 196 | 6.1.3.9.3 | Code phương thức Qlchbh.Bussiness.PhieuXuatHang_ET.UpdateCmd | manual | 0.5d | 2014-06-30 08:00 | 2014-06-30 12:00 | 155 |  |  |  |
| 197 | 6.1.3.9.4 | Code phương thức Qlchbh.Bussiness.PhieuXuatHang_ET.DeleteCmd | manual | 0.5d | 2014-06-30 08:00 | 2014-06-30 12:00 | 155 |  |  |  |
| 198 | 6.1.3.10 | **Code class Qlchbh.Bussiness.ChiTietPhieuXuat_ET** |  | 0.5d | 2014-06-30 13:00 | 2014-06-30 17:00 | 197 | 0d | NghiaTT | 4h |
| 199 | 6.1.3.10.1 | Code phương thức Qlchbh.Bussiness.ChiTietPhieuXuat_ET.ListField | manual | 0.5d | 2014-06-30 13:00 | 2014-06-30 17:00 | 197 |  |  |  |
| 200 | 6.1.3.10.2 | Code phương thức Qlchbh.Bussiness.ChiTietPhieuXuat_ET.InsertCmd | manual | 0.5d | 2014-06-30 13:00 | 2014-06-30 17:00 | 197 |  |  |  |
| 201 | 6.1.3.10.3 | Code phương thức Qlchbh.Bussiness.ChiTietPhieuXuat_ET.UpdateCmd | manual | 0.5d | 2014-06-30 13:00 | 2014-06-30 17:00 | 197 |  |  |  |
| 202 | 6.1.3.10.4 | Code phương thức Qlchbh.Bussiness.ChiTietPhieuXuat_ET.DeleteCmd | manual | 0.5d | 2014-06-30 13:00 | 2014-06-30 17:00 | 197 |  |  |  |
| 203 | 6.1.3.11 | **Code class Qlchbh.Bussiness.HoaDon_ET** |  | 0.5d | 2014-06-30 08:00 | 2014-06-30 12:00 | 155 | 0d | TuanTV | 4h |
| 204 | 6.1.3.11.1 | Code phương thức Qlchbh.Bussiness.HoaDon_ET.ListField | manual | 0.5d | 2014-06-30 08:00 | 2014-06-30 12:00 | 155 |  |  |  |
| 205 | 6.1.3.11.2 | Code phương thức Qlchbh.Bussiness.HoaDon_ET.InsertCmd | manual | 0.5d | 2014-06-30 08:00 | 2014-06-30 12:00 | 155 |  |  |  |
| 206 | 6.1.3.11.3 | Code phương thức Qlchbh.Bussiness.HoaDon_ET.UpdateCmd | manual | 0.5d | 2014-06-30 08:00 | 2014-06-30 12:00 | 155 |  |  |  |
| 207 | 6.1.3.11.4 | Code phương thức Qlchbh.Bussiness.HoaDon_ET.DeleteCmd | manual | 0.5d | 2014-06-30 08:00 | 2014-06-30 12:00 | 155 |  |  |  |
| 208 | 6.1.3.12 | **Code class Qlchbh.Bussiness.ChiTietHoaDon_ET** |  | 0.5d | 2014-06-30 13:00 | 2014-06-30 17:00 | 207 | 0d | TuanTV | 4h |
| 209 | 6.1.3.12.1 | Code phương thức Qlchbh.Bussiness.ChiTietHoaDon_ET.ListField | manual | 0.5d | 2014-06-30 13:00 | 2014-06-30 17:00 | 207 |  |  |  |
| 210 | 6.1.3.12.2 | Code phương thức Qlchbh.Bussiness.ChiTietHoaDon_ET.InsertCmd | manual | 0.5d | 2014-06-30 13:00 | 2014-06-30 17:00 | 207 |  |  |  |
| 211 | 6.1.3.12.3 | Code phương thức Qlchbh.Bussiness.ChiTietHoaDon_ET.UpdateCmd | manual | 0.5d | 2014-06-30 13:00 | 2014-06-30 17:00 | 207 |  |  |  |
| 212 | 6.1.3.12.4 | Code phương thức Qlchbh.Bussiness.ChiTietHoaDon_ET.DeleteCmd | manual | 0.5d | 2014-06-30 13:00 | 2014-06-30 17:00 | 207 |  |  |  |
| 213 | 6.1.3.13 | **Code class Qlchbh.Bussiness.NhanVien_ET** |  | 0.5d | 2014-06-30 08:00 | 2014-06-30 12:00 | 155 | 0d | NghiaTT | 4h |
| 214 | 6.1.3.13.1 | Code phương thức Qlchbh.Bussiness.NhanVien_ET.ListField | manual | 0.5d | 2014-06-30 08:00 | 2014-06-30 12:00 | 155 |  |  |  |
| 215 | 6.1.3.13.2 | Code phương thức Qlchbh.Bussiness.NhanVien_ET.InsertCmd | manual | 0.5d | 2014-06-30 08:00 | 2014-06-30 12:00 | 155 |  |  |  |
| 216 | 6.1.3.13.3 | Code phương thức Qlchbh.Bussiness.NhanVien_ET.UpdateCmd | manual | 0.5d | 2014-06-30 08:00 | 2014-06-30 12:00 | 155 |  |  |  |
| 217 | 6.1.3.13.4 | Code phương thức Qlchbh.Bussiness.NhanVien_ET.DeleteCmd | manual | 0.5d | 2014-06-30 08:00 | 2014-06-30 12:00 | 155 |  |  |  |

| ID | WBS | Task | Type | Duration | Start | Finish | Predecessors | Total slack | Resources | Work |
| --- | --- | --- | --- | --- | --- | --- | --- | --- | --- | --- |
| 218 | 6.1.3.14 | **Code class Qlchbh.Bussiness.Luong_ET** |  | 0.5d | 2014-06-30 13:00 | 2014-06-30 17:00 | 217 | 0d | NghiaTT | 4h |
| 219 | 6.1.3.14.1 | Code phương thức Qlchbh.Bussiness.Luong_ET.ListField | manual | 0.5d | 2014-06-30 13:00 | 2014-06-30 17:00 | 217 |  |  |  |
| 220 | 6.1.3.14.2 | Code phương thức Qlchbh.Bussiness.Luong_ET.InsertCmd | manual | 0.5d | 2014-06-30 13:00 | 2014-06-30 17:00 | 217 |  |  |  |
| 221 | 6.1.3.14.3 | Code phương thức Qlchbh.Bussiness.Luong_ET.UpdateCmd | manual | 0.5d | 2014-06-30 13:00 | 2014-06-30 17:00 | 217 |  |  |  |
| 222 | 6.1.3.14.4 | Code phương thức Qlchbh.Bussiness.Luong_ET.DeleteCmd | manual | 0.5d | 2014-06-30 13:00 | 2014-06-30 17:00 | 217 |  |  |  |
| 223 | 6.1.3.15 | **Code class Qlchbh.Bussiness.KhachHangThanThiet_ET** |  | 0.5d | 2014-06-30 08:00 | 2014-06-30 12:00 | 155 | 0d | TuanTV | 4h |
| 224 | 6.1.3.15.1 | Code phương thức Qlchbh.Bussiness.KhachHangThanThiet_ET.ListField | manual | 0.5d | 2014-06-30 08:00 | 2014-06-30 12:00 | 155 |  |  |  |
| 225 | 6.1.3.15.2 | Code phương thức Qlchbh.Bussiness.KhachHangThanThiet_ET.InsertCmd | manual | 0.5d | 2014-06-30 08:00 | 2014-06-30 12:00 | 155 |  |  |  |
| 226 | 6.1.3.15.3 | Code phương thức Qlchbh.Bussiness.KhachHangThanThiet_ET.UpdateCmd | manual | 0.5d | 2014-06-30 08:00 | 2014-06-30 12:00 | 155 |  |  |  |
| 227 | 6.1.3.15.4 | Code phương thức Qlchbh.Bussiness.KhachHangThanThiet_ET.DeleteCmd | manual | 0.5d | 2014-06-30 08:00 | 2014-06-30 12:00 | 155 |  |  |  |
| 228 | 6.1.3.16 | **Code class Quanlycuahangbachhoa.Business.ThongKe** |  | 0.5d | 2014-06-30 13:00 | 2014-06-30 17:00 | 227 | 0d | TuanTV | 4h |
| 229 | 6.1.3.16.1 | Code phương thức Quanlycuahangbachhoa.Business.ThongKe.GetAll | manual | 0.5d | 2014-06-30 13:00 | 2014-06-30 17:00 | 227 |  |  |  |
| 230 | 6.1.3.16.2 | Code phương thức Quanlycuahangbachhoa.Business.ThongKe.getName | manual | 0.5d | 2014-06-30 13:00 | 2014-06-30 17:00 | 227 |  |  |  |
| 231 | 6.1.3.16.3 | Code phương thức Quanlycuahangbachhoa.Business.ThongKe.isExist | manual | 0.5d | 2014-06-30 13:00 | 2014-06-30 17:00 | 227 |  |  |  |
| 232 | 6.1.3.16.4 | Code phương thức Quanlycuahangbachhoa.Business.ThongKe.InsertCmd | manual | 0.5d | 2014-06-30 13:00 | 2014-06-30 17:00 | 227 |  |  |  |
| 233 | 6.1.3.16.5 | Code phương thức Quanlycuahangbachhoa.Business.ThongKe.UpdateCmd | manual | 0.5d | 2014-06-30 13:00 | 2014-06-30 17:00 | 227 |  |  |  |
| 234 | 6.1.3.16.6 | Code phương thức Quanlycuahangbachhoa.Business.ThongKe.DeleteCmd | manual | 0.5d | 2014-06-30 13:00 | 2014-06-30 17:00 | 227 |  |  |  |
| 235 | 6.2 | **Kiểm thử** |  | 3d | 2014-07-01 08:00 | 2014-07-03 17:00 | 234 | 0d | ChungPQ; GiangDH; HaVV; MinhNN; NghiaTT; TuanTV | 472h |
| 236 | 6.2.1 | **Test CSDL (Database QuanLyCTDT)** |  | 1d | 2014-07-01 08:00 | 2014-07-01 17:00 | 234 | 0d | ChungPQ; GiangDH; HaVV; MinhNN; NghiaTT; TuanTV | 96h |
| 237 | 6.2.1.1 | Test table Qlchbh.HangHoa | manual | 0.5d | 2014-07-01 08:00 | 2014-07-01 12:00 | 234 |  | ChungPQ | 4h |
| 238 | 6.2.1.2 | Test table Qlchbh.LoaiHang |  | 0.5d | 2014-07-01 13:00 | 2014-07-01 17:00 | 237 | 29.8d | ChungPQ | 4h |
| 239 | 6.2.1.3 | Test table Qlchbh.NhaCungCap | manual | 0.5d | 2014-07-01 08:00 | 2014-07-01 12:00 | 234 |  | GiangDH | 4h |
| 240 | 6.2.1.4 | Test table Qlchbh.PhieuNhapHang |  | 0.5d | 2014-07-01 13:00 | 2014-07-01 17:00 | 239 | 29.8d | GiangDH | 4h |
| 241 | 6.2.1.5 | Test table Qlchbh.ChiTietPhieuNhapHang | manual | 0.5d | 2014-07-01 08:00 | 2014-07-01 12:00 | 234 |  | HaVV | 4h |
| 242 | 6.2.1.6 | Test table Qlchbh.PhieuXuatHang |  | 0.5d | 2014-07-01 13:00 | 2014-07-01 17:00 | 241 | 29.8d | HaVV | 4h |
| 243 | 6.2.1.7 | Test table Qlchbh.ChiTietPhieuXuatHang | manual | 0.5d | 2014-07-01 08:00 | 2014-07-01 12:00 | 234 |  | MinhNN | 4h |
| 244 | 6.2.1.8 | Test table Qlchbh.HoaDon |  | 0.5d | 2014-07-01 13:00 | 2014-07-01 17:00 | 243 | 29.8d | MinhNN | 4h |
| 245 | 6.2.1.9 | Test table Qlchbh.ChiTietHoaDon | manual | 0.5d | 2014-07-01 08:00 | 2014-07-01 12:00 | 234 |  | NghiaTT | 4h |
| 246 | 6.2.1.10 | Test table Qlchbh.NhanVien |  | 0.5d | 2014-07-01 13:00 | 2014-07-01 17:00 | 245 | 29.8d | NghiaTT | 4h |
| 247 | 6.2.1.11 | Test table Qlchbh.Luong | manual | 0.5d | 2014-07-01 08:00 | 2014-07-01 12:00 | 234 |  | TuanTV | 4h |
| 248 | 6.2.1.12 | Test table Qlchbh.KhachHangThanThiet |  | 0.5d | 2014-07-01 13:00 | 2014-07-01 17:00 | 247 | 0d | TuanTV | 4h |

| ID | WBS | Task | Type | Duration | Start | Finish | Predecessors | Total slack | Free slack | Resources | Work |
| --- | --- | --- | --- | --- | --- | --- | --- | --- | --- | --- | --- |
| 249 | 6.2.2 | **Test Chức năng** |  | 2d | 2014-07-02 08:00 | 2014-07-03 17:00 | 248 |  |  | ChungPQ; GiangDH; HaVV; MinhNN; NghiaTT | 232h |
| 250 | 6.2.2.1 | **Test giao diện** |  | 1d | 2014-07-02 08:00 | 2014-07-02 17:00 | 248 |  |  | ChungPQ; GiangDH; HaVV; MinhNN; NghiaTT | 76h |
| 251 | 6.2.2.1.1 | Code form Qlchbh.DangNhap |  | 0.3d | 2014-07-02 08:00 | 2014-07-02 10:24 | 248 | 0.1d | 0d | ChungPQ | 2.4h |
| 252 | 6.2.2.1.2 | Code form Qlchbh.DoiMatKhau |  | 0.3d | 2014-07-02 10:24 | 2014-07-02 13:48 | 251 | 0.1d | 0d | ChungPQ | 2.4h |
| 253 | 6.2.2.1.3 | Code form Qlchbh.Chinh |  | 0.3d | 2014-07-02 13:48 | 2014-07-02 16:12 | 252 | 0.1d |  | ChungPQ | 2.4h |
| 254 | 6.2.2.1.4 | Code form Qlchbh.QuanLyHangHoa |  | 0.3d | 2014-07-02 08:00 | 2014-07-02 10:24 | 248 | 0.1d | 0d | GiangDH | 2.4h |
| 255 | 6.2.2.1.5 | Code form Qlchbh.QuanLyLoaiHang |  | 0.3d | 2014-07-02 10:24 | 2014-07-02 13:48 | 254 | 0.1d | 0d | GiangDH | 2.4h |
| 256 | 6.2.2.1.6 | Code form Qlchbh.QuanLyNhaCungCap |  | 0.3d | 2014-07-02 13:48 | 2014-07-02 16:12 | 255 | 0.1d |  | GiangDH | 2.4h |
| 257 | 6.2.2.1.7 | Code form Qlchbh.QuanLyPhieuNhapHang |  | 0.3d | 2014-07-02 08:00 | 2014-07-02 10:24 | 248 | 0.1d | 0d | HaVV | 2.4h |
| 258 | 6.2.2.1.8 | Code form Qlchbh.ChiTietPhieuNhapHang |  | 0.3d | 2014-07-02 10:24 | 2014-07-02 13:48 | 257 | 0.1d | 0d | HaVV | 2.4h |
| 259 | 6.2.2.1.9 | Code form Qlchbh.QuanLyPhieuXuatHang |  | 0.3d | 2014-07-02 13:48 | 2014-07-02 16:12 | 258 | 0.1d |  | HaVV | 2.4h |
| 260 | 6.2.2.1.10 | Code form Qlchbh.ChiTietPhieuXuatHang |  | 0.3d | 2014-07-02 08:00 | 2014-07-02 10:24 | 248 | 0.1d | 0d | MinhNN | 2.4h |
| 261 | 6.2.2.1.11 | Code form Qlchbh.QuanLyHoaDon |  | 0.3d | 2014-07-02 10:24 | 2014-07-02 13:48 | 260 | 0.1d | 0d | MinhNN | 2.4h |
| 262 | 6.2.2.1.12 | Code form Qlchbh.ChiTietHoaDon |  | 0.3d | 2014-07-02 13:48 | 2014-07-02 16:12 | 261 | 0.1d |  | MinhNN | 2.4h |
| 263 | 6.2.2.1.13 | Code form Qlchbh.QuanLyNhanVien |  | 0.3d | 2014-07-02 08:00 | 2014-07-02 10:24 | 248 | 0d |  | NghiaTT | 2.4h |
| 264 | 6.2.2.1.14 | Code form Qlchbh.QuanLyLuong |  | 0.3d | 2014-07-02 10:24 | 2014-07-02 13:48 | 263 | 0d |  | NghiaTT | 2.4h |
| 265 | 6.2.2.1.15 | Code form Qlchbh.QuanLyKhachHangThanThiet |  | 0.3d | 2014-07-02 13:48 | 2014-07-02 16:12 | 264 | 0d |  | NghiaTT | 2.4h |
| 266 | 6.2.2.2 | **Test class** |  | 1d | 2014-07-02 16:12 | 2014-07-03 16:12 | 265 |  |  | ChungPQ; GiangDH; HaVV; MinhNN; NghiaTT | 76h |
| 267 | 6.2.2.2.1 | Test class Qlchbh.Common.Connect | manual | 0.3d | 2014-07-02 16:12 | 2014-07-03 09:36 | 265 |  |  | ChungPQ | 2.4h |
| 268 | 6.2.2.2.2 | Test class Qlchbh.DataAcessLayer.DataAcessLayer | manual | 0.3d | 2014-07-03 09:36 | 2014-07-03 12:00 | 267 |  |  | ChungPQ | 2.4h |
| 269 | 6.2.2.2.3 | Test class Qlchbh.Bussiness.HangHoa | manual | 0.3d | 2014-07-03 13:00 | 2014-07-03 15:24 | 268 |  |  | ChungPQ | 2.4h |
| 270 | 6.2.2.2.4 | Test class Qlchbh.Bussiness.LoaiHang | manual | 0.3d | 2014-07-02 16:12 | 2014-07-03 09:36 | 265 |  |  | GiangDH | 2.4h |
| 271 | 6.2.2.2.5 | Test class Qlchbh.Bussiness.NhaCungCap | manual | 0.3d | 2014-07-03 09:36 | 2014-07-03 12:00 | 270 |  |  | GiangDH | 2.4h |
| 272 | 6.2.2.2.6 | Test class Qlchbh.Bussiness.PhieuNhapHang | manual | 0.3d | 2014-07-03 13:00 | 2014-07-03 15:24 | 271 |  |  | GiangDH | 2.4h |
| 273 | 6.2.2.2.7 | Test class Qlchbh.Bussiness.ChiTietPhieuNhapHang | manual | 0.3d | 2014-07-02 16:12 | 2014-07-03 09:36 | 265 |  |  | HaVV | 2.4h |
| 274 | 6.2.2.2.8 | Test class Qlchbh.Bussiness.PhieuXuatHang | manual | 0.3d | 2014-07-03 09:36 | 2014-07-03 12:00 | 273 |  |  | HaVV | 2.4h |
| 275 | 6.2.2.2.9 | Test class Qlchbh.Bussiness.ChiTietPhieuXuatHang | manual | 0.3d | 2014-07-03 13:00 | 2014-07-03 15:24 | 274 |  |  | HaVV | 2.4h |
| 276 | 6.2.2.2.10 | Test class Qlchbh.Bussiness.HoaDon | manual | 0.3d | 2014-07-02 16:12 | 2014-07-03 09:36 | 265 |  |  | MinhNN | 2.4h |
| 277 | 6.2.2.2.11 | Test class Qlchbh.Bussiness.ChiTietHoaDon | manual | 0.3d | 2014-07-03 09:36 | 2014-07-03 12:00 | 276 |  |  | MinhNN | 2.4h |
| 278 | 6.2.2.2.12 | Test class Qlchbh.Bussiness.NhanVien | manual | 0.3d | 2014-07-03 13:00 | 2014-07-03 15:24 | 277 |  |  | MinhNN | 2.4h |
| 279 | 6.2.2.2.13 | Test class Qlchbh.Bussiness.Luong | manual | 0.3d | 2014-07-02 16:12 | 2014-07-03 09:36 | 265 |  |  | NghiaTT | 2.4h |
| 280 | 6.2.2.2.14 | Test class Qlchbh.Bussiness.KhachHangThanThiet | manual | 0.3d | 2014-07-03 09:36 | 2014-07-03 12:00 | 279 |  |  | NghiaTT | 2.4h |
| 281 | 6.2.2.2.15 | Test class Qlchbh.Bussiness.ThongKe | manual | 0.3d | 2014-07-03 13:00 | 2014-07-03 15:24 | 280 |  |  | NghiaTT | 2.4h |

| ID | WBS | Task | Type | Duration | Start | Finish | Predecessors | Total slack | Resources | Work |
| --- | --- | --- | --- | --- | --- | --- | --- | --- | --- | --- |
| 282 | 7 | **Tích hợp hệ thống** |  | 10d | 2014-07-03 15:24 | 2014-07-17 15:24 | 281 | 0d | GiangDH; HaVV; NghiaTT | 480h |
| 283 | 7.1 | Tích hợp hệ thống | manual | 6d | 2014-07-03 15:24 | 2014-07-11 15:24 | 281 |  | GiangDH; HaVV; NghiaTT | 144h |
| 284 | 7.2 | Test tích hợp hệ thống | manual | 4d | 2014-07-11 15:24 | 2014-07-17 15:24 | 283 |  | NghiaTT; HaVV; GiangDH | 96h |
| 285 | 8 | **Xây dựng tài liệu** |  | 10d | 2014-07-17 15:24 | 2014-07-31 15:24 | 284 | 0d | GiangDH; HaVV; NghiaTT | 480h |
| 286 | 8.1 | Tài liệu mô tả sản phẩm | manual | 5d | 2014-07-17 15:24 | 2014-07-24 15:24 | 284 |  | GiangDH | 40h |
| 287 | 8.2 | Xây dựng phương án triển khai, tài liệu hướng dẫn triển khai | manual | 5d | 2014-07-17 15:24 | 2014-07-24 15:24 | 284 |  | HaVV | 40h |
| 288 | 8.3 | Xây dựng tài liệu đào tạo | manual | 5d | 2014-07-17 15:24 | 2014-07-24 15:24 | 284 |  | NghiaTT | 40h |
| 289 | 8.4 | Xây dựng các tài liệu quảng bá sản phẩm khác |  | 5d | 2014-07-24 15:24 | 2014-07-31 15:24 | 288 | 0d | GiangDH; HaVV; NghiaTT | 120h |
| 290 | 9 | **Triển khai** |  | 5d | 2014-07-31 15:24 | 2014-08-07 15:24 | 289 | 0d | GiangDH; HaVV; NghiaTT | 240h |
| 291 | 9.1 | Triển khai cài đặt hệ thống | manual | 1d | 2014-07-31 15:24 | 2014-08-01 15:24 | 289 |  | GiangDH; HaVV; NghiaTT | 24h |
| 292 | 9.2 | Chuyển đổi dữ liệu |  | 1d | 2014-08-01 15:24 | 2014-08-04 15:24 | 291 | 0d | GiangDH; HaVV; NghiaTT | 24h |
| 293 | 9.3 | Cấu hình hệ thống |  | 1d | 2014-08-04 15:24 | 2014-08-05 15:24 | 292 | 0d | GiangDH; HaVV; NghiaTT | 24h |
| 294 | 9.4 | Đào tạo | manual | 1d | 2014-08-05 15:24 | 2014-08-06 15:24 | 293 |  | GiangDH; HaVV; NghiaTT | 24h |
| 295 | 9.5 | Chạy thử nghiệm | manual | 1d | 2014-08-06 15:24 | 2014-08-07 15:24 | 294 |  | GiangDH; HaVV; NghiaTT | 24h |
| 296 | 10 | **Hỗ trợ** |  | 3d | 2014-08-07 15:24 | 2014-08-12 15:24 | 295 | 0d | GiangDH; HaVV; NghiaTT | 72h |
| 297 | 10.1 | Hỗ trợ trong thời gian bảo hành | manual | 3d | 2014-08-07 15:24 | 2014-08-12 15:24 |  |  |  |  |
| 298 | 10.2 | Hỗ trợ sau bảo hành | manual | 2d | 2014-08-07 15:24 | 2014-08-11 15:24 |  |  |  |  |
